# Stargazer

Schedule from MS Project, 2010-01-06 to 2010-03-31, 4 hours a day, A marks actual dates.
Okanagan College

## Calendars

- Standard: Mon 14:00-16:30; Tue off; Wed 14:30-16:30; Thu 14:30-18:30; Fri-Sun off. Exceptions (off unless hours are given): 2010-03-13 08:00-12:00, 13:00-17:00.

## Resources

| Resource |
| --- |
| Robert |
| Rob |

## Schedule

| ID | WBS | Task | Duration | Start | Finish | Predecessors | Complete | Remaining | Total slack | Free slack | Constraint | Resources | Work | Actual work | Text1 |
| --- | --- | --- | --- | --- | --- | --- | --- | --- | --- | --- | --- | --- | --- | --- | --- |
| 1 | 1 | **Iteration 8: Image Capturing: (Total: units)** | 27.62d? | 2010-01-06 14:30 A | 2010-03-31 15:00 |  | 4% | 26.54d? | 0d |  |  |  | 43h | 2h | 16 |
| 2 | 1.1 | **Business Modeling: (Total: unit)** | 0.06d | 2010-03-13 08:00 A | 2010-03-13 08:15 A |  | 100% |  |  |  |  |  | 0.25h | 0.25h | 16 |
| 3 | 1.1.1 | Update vision to coincide with changes | 15min | 2010-03-13 08:00 A | 2010-03-13 08:15 A |  | 100% |  |  |  | start no earlier than 2010-03-12 08:00 | Rob | 0.25h | 0.25h |  |
| 4 | 1.2 | **Implementation: (Total: units)** | 24.69d? | 2010-01-06 16:00 A | 2010-03-22 15:15 |  |  | 24.69d? | 2.56d |  |  |  | 35.25h |  | 16 |
| 5 | 1.2.1 | Web system | 1d? | 2010-03-04 08:00 A | 2010-03-04 18:30 |  |  | 1d? | 9.12d |  |  |  |  |  | 16 |
| 6 | 1.2.2 | **Telescope-Controlling Application** | 24.69d | 2010-01-06 16:00 | 2010-03-22 15:15 |  |  |  | 2.56d |  |  |  | 35.25h |  |  |
| 7 | 1.2.2.1 | **A Test Program** | 7.5d | 2010-01-06 16:00 | 2010-01-28 18:30 |  |  |  | 19.75d |  |  |  | 34h |  | 16 |
| 8 | 1.2.2.1.1 | Create test program to communicate with the camera and take a picture | 4d | 2010-01-06 16:00 | 2010-01-20 15:00 | 28 |  |  | 19.75d | 0d |  | Robert | 16h |  | 64 |
| 9 | 1.2.2.1.2 | Test getting and setting parameters of the camera | 1d | 2010-01-20 15:00 | 2010-01-21 17:00 | 8, 28 |  |  | 22.25d |  |  | Robert | 4h |  | 16 |
| 10 | 1.2.2.1.3 | Allow input for selected parameters | 1d | 2010-01-20 15:00 | 2010-01-21 17:00 | 8 |  |  | 19.75d | 0d |  | Robert | 4h |  | 16 |
| 11 | 1.2.2.1.4 | Set parameters based on inputs | 1.5d | 2010-01-21 17:00 | 2010-01-27 16:30 | 8, 10, 28 |  |  | 19.75d | 0d |  | Robert | 6h |  | 24 |
| 12 | 1.2.2.1.5 | Add error checking | 1d | 2010-01-28 14:30 | 2010-01-28 18:30 | 8, 10, 11, 28 |  |  | 19.75d |  |  | Robert | 4h |  | 16 |
| 13 | 1.2.2.2 | **Integration with Telescope Controlling Application** | 0.31d | 2010-03-22 14:00 | 2010-03-22 15:15 |  |  |  | 2.56d |  |  |  | 1.25h |  | 16 |
| 14 | 1.2.2.2.1 | Migrate source code to telescope control app | 0.25h | 2010-03-22 14:00 | 2010-03-22 14:15 |  |  |  | 2.56d | 0d | start no earlier than 2010-03-19 08:00 | Robert | 0.25h |  |  |
| 15 | 1.2.2.2.2 | Clean up camera code and convert it to a method | 0.5h | 2010-03-22 14:15 | 2010-03-22 14:45 | 14 |  |  | 2.56d | 0d |  | Robert | 0.5h |  |  |
| 16 | 1.2.2.2.3 | Modify main method to pass camera settings to camera method | 0.5h | 2010-03-22 14:45 | 2010-03-22 15:15 | 15 |  |  | 2.56d |  |  | Robert | 0.5h |  |  |
| 17 | 1.3 | **Testing: (Total: units)** | 10.12d | 2010-03-04 14:30 A | 2010-03-31 15:00 |  | 26% | 7.48d | 0d |  |  |  | 5.75h | 1.5h | 16 |
| 18 | 1.3.1 | Draft acceptance test | 1h | 2010-03-04 14:30 | 2010-03-04 15:30 |  |  |  | 9.88d |  | start no earlier than 2010-03-04 08:00 | Robert | 1h |  |  |
| 19 | 1.3.2 | **Web system** | 0.75d | 2010-03-26 08:00 A | 2010-03-31 15:00 |  | 50% | 0.38d | 0d |  |  |  | 3h | 1.5h | 16 |
| 20 | 1.3.2.1 | Fix issue with testing environment | 3h | 2010-03-26 08:00 A | 2010-03-31 15:00 |  | 50% | 1.5h | 0d |  |  | Rob | 3h | 1.5h | 12 |
| 21 | 1.3.3 | **Telescope-Controlling Application** | 0.31d | 2010-03-29 14:00 | 2010-03-29 15:15 |  |  |  | 0.44d |  |  |  | 1.75h |  | 16 |
| 22 | 1.3.3.1 | Create camera test method | 0.25h | 2010-03-29 14:00 | 2010-03-29 14:15 |  |  |  | 0.44d | 0d | start no earlier than 2010-03-29 08:00 | Robert | 0.25h |  |  |
| 23 | 1.3.3.2 | Accept inputs from telescope control app | 0.25h | 2010-03-29 14:15 | 2010-03-29 14:30 | 22 |  |  | 0.62d |  |  | Robert | 0.25h |  |  |
| 24 | 1.3.3.3 | Output a test image | 0.25h | 2010-03-29 14:15 | 2010-03-29 14:30 | 22 |  |  | 0.62d |  |  | Robert | 0.25h |  |  |
| 25 | 1.3.3.4 | Simulate camera commands | 1h | 2010-03-29 14:15 | 2010-03-29 15:15 | 22 |  |  | 0.44d |  |  | Robert | 1h |  |  |

Notes:
- 7: Create test program to handle image taking with specific parameters

| ID | WBS | Task | Type | Duration | Start | Finish | Predecessors | Complete | Remaining | Total slack | Free slack | Constraint | Resources | Work | Actual work | Text1 |
| --- | --- | --- | --- | --- | --- | --- | --- | --- | --- | --- | --- | --- | --- | --- | --- | --- |
| 26 | 1.4 | **Analysis and Design: (Total: units)** |  | 27.5d? | 2010-01-06 14:30 A | 2010-03-31 08:00 |  |  | 27.5d? | 0.12d |  |  |  | 1.5h |  | 16 |
| 27 | 1.4.1 | Create PowerPoint for final presentation |  | 1d? | 2010-03-25 14:30 | 2010-03-25 18:30 |  |  |  | 0.75d |  | start no earlier than 2010-03-25 08:00 |  |  |  | 16 |
| 28 | 1.4.2 | Read camera documentation |  | 1.5h | 2010-01-06 14:30 | 2010-01-06 16:00 |  |  |  | 19.75d | 0d |  | Robert | 1.5h |  |  |
| 29 | 1.4.3 | All documentation finished | milestone | 0d | 2010-03-31 08:00 A | 2010-03-31 08:00 A | 18 | 100% |  |  |  | start no earlier than 2010-03-13 08:00 | Rob; Robert |  |  |  |
| 30 | 1.5 | **Deployment: (Total: unit)** |  | 0.06d | 2010-03-13 08:00 A | 2010-03-13 08:15 A |  | 100% |  |  |  |  |  | 0.25h | 0.25h | 16 |
| 31 | 1.5.1 | Deploy latest versions of web application to production |  | 15min | 2010-03-13 08:00 A | 2010-03-13 08:15 A |  | 100% |  |  |  | start no earlier than 2010-03-12 08:00 | Rob | 0.25h | 0.25h |  |
| 32 | 1.6 | Release #8: Image Capturing | milestone | 0d | 2010-03-13 08:00 A | 2010-03-13 08:00 A | 5 | 100% |  |  |  | start no earlier than 2010-03-13 08:00 | Rob; Robert |  |  |  |
